# TAIBA PROJECT

Schedule from GanttProject, 2025-10-13 to 2026-10-30.
Zeeco Asia

## Calendars

- Project calendar: Mon-Sun working.

## Schedule

| ID | WBS | Task | Duration | Start | Finish | Predecessors | Flag1 | Flag2 | Flag3 | Flag4 | Flag5 | Flag6 | Flag7 | Flag8 | Flag9 | Flag10 | Number1 | Number2 | Number3 | Number4 | Number5 | Cost1 | Cost2 | Cost3 | Cost4 | Cost5 | Cost6 | Cost7 | Cost8 | Cost9 | Cost10 | Flag11 | Flag12 | Flag13 | Flag14 | Flag15 | Flag16 | Flag17 | Flag18 | Flag19 | Flag20 | Number6 | Number7 | Number8 | Number9 | Number10 | Number11 | Number12 | Number13 | Number14 | Number15 | Number16 | Number17 | Number18 | Number19 | Number20 |
| --- | --- | --- | --- | --- | --- | --- | --- | --- | --- | --- | --- | --- | --- | --- | --- | --- | --- | --- | --- | --- | --- | --- | --- | --- | --- | --- | --- | --- | --- | --- | --- | --- | --- | --- | --- | --- | --- | --- | --- | --- | --- | --- | --- | --- | --- | --- | --- | --- | --- | --- | --- | --- | --- | --- | --- | --- |
| 1 | 1 | **RABIGH 2_Master Schedule_Rev.A** | 383d | 2025-10-13 | 2026-10-30 |  | false | false | false | false | false | false | false | false | false | false | 0.0 | 0.0 | 0.0 | 0.0 | 0.0 | 0.0 | 0.0 | 0.0 | 0.0 | 0.0 | 0.0 | 0.0 | 0.0 | 0.0 | 0.0 | false | false | false | false | false | false | false | false | false | false | 0.0 | 0.0 | 0.0 | 0.0 | 0.0 | 0.0 | 0.0 | 0.0 | 0.0 | 0.0 | 0.0 | 0.0 | 0.0 | 0.0 | 0.0 |
| 2 | 1.1 | **DOCUMENT APPROVAL** | 139d | 2025-10-13 | 2026-02-28 |  | false | false | false | false | false | false | false | false | false | false | 0.0 | 0.0 | 0.0 | 0.0 | 0.0 | 0.0 | 0.0 | 0.0 | 0.0 | 0.0 | 0.0 | 0.0 | 0.0 | 0.0 | 0.0 | false | false | false | false | false | false | false | false | false | false | 0.0 | 0.0 | 0.0 | 0.0 | 0.0 | 0.0 | 0.0 | 0.0 | 0.0 | 0.0 | 0.0 | 0.0 | 0.0 | 0.0 | 0.0 |
| 3 | 1.1.1 | Burner & Skid Spec. & Drawing | 139d | 2025-10-13 | 2026-02-28 |  | false | false | false | false | false | false | false | false | false | false | 0.0 | 0.0 | 0.0 | 0.0 | 0.0 | 0.0 | 0.0 | 0.0 | 0.0 | 0.0 | 0.0 | 0.0 | 0.0 | 0.0 | 0.0 | false | false | false | false | false | false | false | false | false | false | 0.0 | 0.0 | 0.0 | 0.0 | 0.0 | 0.0 | 0.0 | 0.0 | 0.0 | 0.0 | 0.0 | 0.0 | 0.0 | 0.0 | 0.0 |
| 4 | 1.1.2 | Instrument & Valves | 139d | 2025-10-13 | 2026-02-28 |  | false | false | false | false | false | false | false | false | false | false | 0.0 | 0.0 | 0.0 | 0.0 | 0.0 | 0.0 | 0.0 | 0.0 | 0.0 | 0.0 | 0.0 | 0.0 | 0.0 | 0.0 | 0.0 | false | false | false | false | false | false | false | false | false | false | 0.0 | 0.0 | 0.0 | 0.0 | 0.0 | 0.0 | 0.0 | 0.0 | 0.0 | 0.0 | 0.0 | 0.0 | 0.0 | 0.0 | 0.0 |
| 5 | 1.1.3 | Control Panel & Junction Box | 117d | 2025-11-04 | 2026-02-28 |  | false | false | false | false | false | false | false | false | false | false | 0.0 | 0.0 | 0.0 | 0.0 | 0.0 | 0.0 | 0.0 | 0.0 | 0.0 | 0.0 | 0.0 | 0.0 | 0.0 | 0.0 | 0.0 | false | false | false | false | false | false | false | false | false | false | 0.0 | 0.0 | 0.0 | 0.0 | 0.0 | 0.0 | 0.0 | 0.0 | 0.0 | 0.0 | 0.0 | 0.0 | 0.0 | 0.0 | 0.0 |
| 6 | 1.1.4 | Quality & Inspection Document | 103d | 2025-11-18 | 2026-02-28 |  | false | false | false | false | false | false | false | false | false | false | 0.0 | 0.0 | 0.0 | 0.0 | 0.0 | 0.0 | 0.0 | 0.0 | 0.0 | 0.0 | 0.0 | 0.0 | 0.0 | 0.0 | 0.0 | false | false | false | false | false | false | false | false | false | false | 0.0 | 0.0 | 0.0 | 0.0 | 0.0 | 0.0 | 0.0 | 0.0 | 0.0 | 0.0 | 0.0 | 0.0 | 0.0 | 0.0 | 0.0 |
| 7 | 1.2 | **PURCHASING MATERIALS** | 263d | 2025-12-10 | 2026-08-29 |  | false | false | false | false | false | false | false | false | false | false | 0.0 | 0.0 | 0.0 | 0.0 | 0.0 | 0.0 | 0.0 | 0.0 | 0.0 | 0.0 | 0.0 | 0.0 | 0.0 | 0.0 | 0.0 | false | false | false | false | false | false | false | false | false | false | 0.0 | 0.0 | 0.0 | 0.0 | 0.0 | 0.0 | 0.0 | 0.0 | 0.0 | 0.0 | 0.0 | 0.0 | 0.0 | 0.0 | 0.0 |
| 8 | 1.2.1 | **Duct Burner & Header (ZCN)** | 90d | 2026-03-05 | 2026-06-02 |  | false | false | false | false | false | false | false | false | false | false | 0.0 | 0.0 | 0.0 | 0.0 | 0.0 | 0.0 | 0.0 | 0.0 | 0.0 | 0.0 | 0.0 | 0.0 | 0.0 | 0.0 | 0.0 | false | false | false | false | false | false | false | false | false | false | 0.0 | 0.0 | 0.0 | 0.0 | 0.0 | 0.0 | 0.0 | 0.0 | 0.0 | 0.0 | 0.0 | 0.0 | 0.0 | 0.0 | 0.0 |
| 9 | 1.2.1.1 | Material & Working @ ZCN | 90d | 2026-03-05 | 2026-06-02 |  | false | false | false | false | false | false | false | false | false | false | 0.0 | 0.0 | 0.0 | 0.0 | 0.0 | 0.0 | 0.0 | 0.0 | 0.0 | 0.0 | 0.0 | 0.0 | 0.0 | 0.0 | 0.0 | false | false | false | false | false | false | false | false | false | false | 0.0 | 0.0 | 0.0 | 0.0 | 0.0 | 0.0 | 0.0 | 0.0 | 0.0 | 0.0 | 0.0 | 0.0 | 0.0 | 0.0 | 0.0 |
| 10 | 1.2.2 | **Skid & Etc (ZKR)** | 263d | 2025-12-10 | 2026-08-29 |  | false | false | false | false | false | false | false | false | false | false | 0.0 | 0.0 | 0.0 | 0.0 | 0.0 | 0.0 | 0.0 | 0.0 | 0.0 | 0.0 | 0.0 | 0.0 | 0.0 | 0.0 | 0.0 | false | false | false | false | false | false | false | false | false | false | 0.0 | 0.0 | 0.0 | 0.0 | 0.0 | 0.0 | 0.0 | 0.0 | 0.0 | 0.0 | 0.0 | 0.0 | 0.0 | 0.0 | 0.0 |
| 11 | 1.2.2.1 | Raw material (Flange, Pipe & Fitting) | 100d | 2026-03-05 | 2026-06-12 |  | false | false | false | false | false | false | false | false | false | false | 0.0 | 0.0 | 0.0 | 0.0 | 0.0 | 0.0 | 0.0 | 0.0 | 0.0 | 0.0 | 0.0 | 0.0 | 0.0 | 0.0 | 0.0 | false | false | false | false | false | false | false | false | false | false | 0.0 | 0.0 | 0.0 | 0.0 | 0.0 | 0.0 | 0.0 | 0.0 | 0.0 | 0.0 | 0.0 | 0.0 | 0.0 | 0.0 | 0.0 |
| 12 | 1.2.2.2 | **Valves** | 165d | 2026-03-03 | 2026-08-14 |  | false | false | false | false | false | false | false | false | false | false | 0.0 | 0.0 | 0.0 | 0.0 | 0.0 | 0.0 | 0.0 | 0.0 | 0.0 | 0.0 | 0.0 | 0.0 | 0.0 | 0.0 | 0.0 | false | false | false | false | false | false | false | false | false | false | 0.0 | 0.0 | 0.0 | 0.0 | 0.0 | 0.0 | 0.0 | 0.0 | 0.0 | 0.0 | 0.0 | 0.0 | 0.0 | 0.0 | 0.0 |
| 13 | 1.2.2.2.1 | Shut-off valve | 165d | 2026-03-03 | 2026-08-14 |  | false | false | false | false | false | false | false | false | false | false | 0.0 | 0.0 | 0.0 | 0.0 | 0.0 | 0.0 | 0.0 | 0.0 | 0.0 | 0.0 | 0.0 | 0.0 | 0.0 | 0.0 | 0.0 | false | false | false | false | false | false | false | false | false | false | 0.0 | 0.0 | 0.0 | 0.0 | 0.0 | 0.0 | 0.0 | 0.0 | 0.0 | 0.0 | 0.0 | 0.0 | 0.0 | 0.0 | 0.0 |
| 14 | 1.2.2.2.2 | Manual Valves | 165d | 2026-03-03 | 2026-08-14 |  | false | false | false | false | false | false | false | false | false | false | 0.0 | 0.0 | 0.0 | 0.0 | 0.0 | 0.0 | 0.0 | 0.0 | 0.0 | 0.0 | 0.0 | 0.0 | 0.0 | 0.0 | 0.0 | false | false | false | false | false | false | false | false | false | false | 0.0 | 0.0 | 0.0 | 0.0 | 0.0 | 0.0 | 0.0 | 0.0 | 0.0 | 0.0 | 0.0 | 0.0 | 0.0 | 0.0 | 0.0 |
| 15 | 1.2.2.3 | **Instrument** | 263d | 2025-12-10 | 2026-08-29 |  | false | false | false | false | false | false | false | false | false | false | 0.0 | 0.0 | 0.0 | 0.0 | 0.0 | 0.0 | 0.0 | 0.0 | 0.0 | 0.0 | 0.0 | 0.0 | 0.0 | 0.0 | 0.0 | false | false | false | false | false | false | false | false | false | false | 0.0 | 0.0 | 0.0 | 0.0 | 0.0 | 0.0 | 0.0 | 0.0 | 0.0 | 0.0 | 0.0 | 0.0 | 0.0 | 0.0 | 0.0 |
| 16 | 1.2.2.3.1 | Control valve | 150d | 2026-03-03 | 2026-07-30 |  |  |  |  |  |  |  |  |  |  |  |  |  |  |  |  |  |  |  |  |  |  |  |  |  |  |  |  |  |  |  |  |  |  |  |  |  |  |  |  |  |  |  |  |  |  |  |  |  |  |  |
| 17 | 1.2.2.3.2 | Pressure Gauge | 98d | 2026-03-03 | 2026-06-08 |  |  |  |  |  |  |  |  |  |  |  |  |  |  |  |  |  |  |  |  |  |  |  |  |  |  |  |  |  |  |  |  |  |  |  |  |  |  |  |  |  |  |  |  |  |  |  |  |  |  |  |
| 18 | 1.2.2.3.3 | Press., Flow Transmitter | 138d | 2026-03-03 | 2026-07-18 |  |  |  |  |  |  |  |  |  |  |  |  |  |  |  |  |  |  |  |  |  |  |  |  |  |  |  |  |  |  |  |  |  |  |  |  |  |  |  |  |  |  |  |  |  |  |  |  |  |  |  |
| 19 | 1.2.2.3.4 | Flame Scanner | 126d | 2026-03-03 | 2026-07-06 |  | false | false | false | false | false | false | false | false | false | false | 0.0 | 0.0 | 0.0 | 0.0 | 0.0 | 0.0 | 0.0 | 0.0 | 0.0 | 0.0 | 0.0 | 0.0 | 0.0 | 0.0 | 0.0 | false | false | false | false | false | false | false | false | false | false | 0.0 | 0.0 | 0.0 | 0.0 | 0.0 | 0.0 | 0.0 | 0.0 | 0.0 | 0.0 | 0.0 | 0.0 | 0.0 | 0.0 | 0.0 |
| 20 | 1.2.2.3.5 | Local Control Panel | 100d | 2026-03-03 | 2026-06-10 |  | false | false | false | false | false | false | false | false | false | false | 0.0 | 0.0 | 0.0 | 0.0 | 0.0 | 0.0 | 0.0 | 0.0 | 0.0 | 0.0 | 0.0 | 0.0 | 0.0 | 0.0 | 0.0 | false | false | false | false | false | false | false | false | false | false | 0.0 | 0.0 | 0.0 | 0.0 | 0.0 | 0.0 | 0.0 | 0.0 | 0.0 | 0.0 | 0.0 | 0.0 | 0.0 | 0.0 | 0.0 |
| 21 | 1.2.2.3.6 | Junction Boxes | 100d | 2026-03-03 | 2026-06-10 |  | false | false | false | false | false | false | false | false | false | false | 0.0 | 0.0 | 0.0 | 0.0 | 0.0 | 0.0 | 0.0 | 0.0 | 0.0 | 0.0 | 0.0 | 0.0 | 0.0 | 0.0 | 0.0 | false | false | false | false | false | false | false | false | false | false | 0.0 | 0.0 | 0.0 | 0.0 | 0.0 | 0.0 | 0.0 | 0.0 | 0.0 | 0.0 | 0.0 | 0.0 | 0.0 | 0.0 | 0.0 |
| 22 | 1.2.2.3.7 | Ring Blower | 180d | 2026-03-03 | 2026-08-29 |  |  |  |  |  |  |  |  |  |  |  |  |  |  |  |  |  |  |  |  |  |  |  |  |  |  |  |  |  |  |  |  |  |  |  |  |  |  |  |  |  |  |  |  |  |  |  |  |  |  |  |
| 23 | 1.2.2.3.8 | BMS Panel | 220d | 2025-12-10 | 2026-07-17 |  |  |  |  |  |  |  |  |  |  |  |  |  |  |  |  |  |  |  |  |  |  |  |  |  |  |  |  |  |  |  |  |  |  |  |  |  |  |  |  |  |  |  |  |  |  |  |  |  |  |  |
| 24 | 1.3 | **FABRICATION** | 130d | 2026-06-03 | 2026-10-10 |  | false | false | false | false | false | false | false | false | false | false | 0.0 | 0.0 | 0.0 | 0.0 | 0.0 | 0.0 | 0.0 | 0.0 | 0.0 | 0.0 | 0.0 | 0.0 | 0.0 | 0.0 | 0.0 | false | false | false | false | false | false | false | false | false | false | 0.0 | 0.0 | 0.0 | 0.0 | 0.0 | 0.0 | 0.0 | 0.0 | 0.0 | 0.0 | 0.0 | 0.0 | 0.0 | 0.0 | 0.0 |
| 25 | 1.3.1 | **Duct Burner** | 55d | 2026-06-03 | 2026-07-27 |  | false | false | false | false | false | false | false | false | false | false | 0.0 | 0.0 | 0.0 | 0.0 | 0.0 | 0.0 | 0.0 | 0.0 | 0.0 | 0.0 | 0.0 | 0.0 | 0.0 | 0.0 | 0.0 | false | false | false | false | false | false | false | false | false | false | 0.0 | 0.0 | 0.0 | 0.0 | 0.0 | 0.0 | 0.0 | 0.0 | 0.0 | 0.0 | 0.0 | 0.0 | 0.0 | 0.0 | 0.0 |
| 26 | 1.3.1.1 | Machining / Cutting / Bending | 15d | 2026-06-03 | 2026-06-17 |  |  |  |  |  |  |  |  |  |  |  |  |  |  |  |  |  |  |  |  |  |  |  |  |  |  |  |  |  |  |  |  |  |  |  |  |  |  |  |  |  |  |  |  |  |  |  |  |  |  |  |
| 27 | 1.3.1.2 | Welding / Grinding | 30d | 2026-06-18 | 2026-07-17 | 26 | false | false | false | false | false | false | false | false | false | false | 0.0 | 0.0 | 0.0 | 0.0 | 0.0 | 0.0 | 0.0 | 0.0 | 0.0 | 0.0 | 0.0 | 0.0 | 0.0 | 0.0 | 0.0 | false | false | false | false | false | false | false | false | false | false | 0.0 | 0.0 | 0.0 | 0.0 | 0.0 | 0.0 | 0.0 | 0.0 | 0.0 | 0.0 | 0.0 | 0.0 | 0.0 | 0.0 | 0.0 |
| 28 | 1.3.1.3 | NDE Test | 5d | 2026-07-18 | 2026-07-22 | 27 | false | false | false | false | false | false | false | false | false | false | 0.0 | 0.0 | 0.0 | 0.0 | 0.0 | 0.0 | 0.0 | 0.0 | 0.0 | 0.0 | 0.0 | 0.0 | 0.0 | 0.0 | 0.0 | false | false | false | false | false | false | false | false | false | false | 0.0 | 0.0 | 0.0 | 0.0 | 0.0 | 0.0 | 0.0 | 0.0 | 0.0 | 0.0 | 0.0 | 0.0 | 0.0 | 0.0 | 0.0 |
| 29 | 1.3.1.4 | Parts Pre-Assembly | 5d | 2026-07-23 | 2026-07-27 |  |  |  |  |  |  |  |  |  |  |  |  |  |  |  |  |  |  |  |  |  |  |  |  |  |  |  |  |  |  |  |  |  |  |  |  |  |  |  |  |  |  |  |  |  |  |  |  |  |  |  |

| ID | WBS | Task | Duration | Start | Finish | Predecessors | Flag1 | Flag2 | Flag3 | Flag4 | Flag5 | Flag6 | Flag7 | Flag8 | Flag9 | Flag10 | Number1 | Number2 | Number3 | Number4 | Number5 | Cost1 | Cost2 | Cost3 | Cost4 | Cost5 | Cost6 | Cost7 | Cost8 | Cost9 | Cost10 | Flag11 | Flag12 | Flag13 | Flag14 | Flag15 | Flag16 | Flag17 | Flag18 | Flag19 | Flag20 | Number6 | Number7 | Number8 | Number9 | Number10 | Number11 | Number12 | Number13 | Number14 | Number15 | Number16 | Number17 | Number18 | Number19 | Number20 |
| --- | --- | --- | --- | --- | --- | --- | --- | --- | --- | --- | --- | --- | --- | --- | --- | --- | --- | --- | --- | --- | --- | --- | --- | --- | --- | --- | --- | --- | --- | --- | --- | --- | --- | --- | --- | --- | --- | --- | --- | --- | --- | --- | --- | --- | --- | --- | --- | --- | --- | --- | --- | --- | --- | --- | --- | --- |
| 30 | 1.3.2 | **Skid & Etc** | 50d | 2026-06-15 | 2026-08-03 |  | false | false | false | false | false | false | false | false | false | false | 0.0 | 0.0 | 0.0 | 0.0 | 0.0 | 0.0 | 0.0 | 0.0 | 0.0 | 0.0 | 0.0 | 0.0 | 0.0 | 0.0 | 0.0 | false | false | false | false | false | false | false | false | false | false | 0.0 | 0.0 | 0.0 | 0.0 | 0.0 | 0.0 | 0.0 | 0.0 | 0.0 | 0.0 | 0.0 | 0.0 | 0.0 | 0.0 | 0.0 |
| 31 | 1.3.2.1 | Machining / Cutting / Bending | 10d | 2026-06-15 | 2026-06-24 |  |  |  |  |  |  |  |  |  |  |  |  |  |  |  |  |  |  |  |  |  |  |  |  |  |  |  |  |  |  |  |  |  |  |  |  |  |  |  |  |  |  |  |  |  |  |  |  |  |  |  |
| 32 | 1.3.2.2 | Welding / Grinding | 22d | 2026-06-25 | 2026-07-16 | 31 | false | false | false | false | false | false | false | false | false | false | 0.0 | 0.0 | 0.0 | 0.0 | 0.0 | 0.0 | 0.0 | 0.0 | 0.0 | 0.0 | 0.0 | 0.0 | 0.0 | 0.0 | 0.0 | false | false | false | false | false | false | false | false | false | false | 0.0 | 0.0 | 0.0 | 0.0 | 0.0 | 0.0 | 0.0 | 0.0 | 0.0 | 0.0 | 0.0 | 0.0 | 0.0 | 0.0 | 0.0 |
| 33 | 1.3.2.3 | NDE Test | 7d | 2026-07-17 | 2026-07-23 | 32 | false | false | false | false | false | false | false | false | false | false | 0.0 | 0.0 | 0.0 | 0.0 | 0.0 | 0.0 | 0.0 | 0.0 | 0.0 | 0.0 | 0.0 | 0.0 | 0.0 | 0.0 | 0.0 | false | false | false | false | false | false | false | false | false | false | 0.0 | 0.0 | 0.0 | 0.0 | 0.0 | 0.0 | 0.0 | 0.0 | 0.0 | 0.0 | 0.0 | 0.0 | 0.0 | 0.0 | 0.0 |
| 34 | 1.3.2.4 | Parts Pre-Assembly | 8d | 2026-07-27 | 2026-08-03 |  |  |  |  |  |  |  |  |  |  |  |  |  |  |  |  |  |  |  |  |  |  |  |  |  |  |  |  |  |  |  |  |  |  |  |  |  |  |  |  |  |  |  |  |  |  |  |  |  |  |  |
| 35 | 1.3.3 | Painting | 12d | 2026-08-04 | 2026-08-15 |  | false | false | false | false | false | false | false | false | false | false | 0.0 | 0.0 | 0.0 | 0.0 | 0.0 | 0.0 | 0.0 | 0.0 | 0.0 | 0.0 | 0.0 | 0.0 | 0.0 | 0.0 | 0.0 | false | false | false | false | false | false | false | false | false | false | 0.0 | 0.0 | 0.0 | 0.0 | 0.0 | 0.0 | 0.0 | 0.0 | 0.0 | 0.0 | 0.0 | 0.0 | 0.0 | 0.0 | 0.0 |
| 36 | 1.3.4 | Assemble with Instruments | 9d | 2026-08-17 | 2026-08-25 |  | false | false | false | false | false | false | false | false | false | false | 0.0 | 0.0 | 0.0 | 0.0 | 0.0 | 0.0 | 0.0 | 0.0 | 0.0 | 0.0 | 0.0 | 0.0 | 0.0 | 0.0 | 0.0 | false | false | false | false | false | false | false | false | false | false | 0.0 | 0.0 | 0.0 | 0.0 | 0.0 | 0.0 | 0.0 | 0.0 | 0.0 | 0.0 | 0.0 | 0.0 | 0.0 | 0.0 | 0.0 |
| 37 | 1.3.5 | Burner Function Setting | 5d | 2026-08-26 | 2026-08-30 |  | false | false | false | false | false | false | false | false | false | false | 0.0 | 0.0 | 0.0 | 0.0 | 0.0 | 0.0 | 0.0 | 0.0 | 0.0 | 0.0 | 0.0 | 0.0 | 0.0 | 0.0 | 0.0 | false | false | false | false | false | false | false | false | false | false | 0.0 | 0.0 | 0.0 | 0.0 | 0.0 | 0.0 | 0.0 | 0.0 | 0.0 | 0.0 | 0.0 | 0.0 | 0.0 | 0.0 | 0.0 |
| 38 | 1.3.6 | Skid Wiring & Panel Function Test | 25d | 2026-08-31 | 2026-09-24 |  | false | false | false | false | false | false | false | false | false | false | 0.0 | 0.0 | 0.0 | 0.0 | 0.0 | 0.0 | 0.0 | 0.0 | 0.0 | 0.0 | 0.0 | 0.0 | 0.0 | 0.0 | 0.0 | false | false | false | false | false | false | false | false | false | false | 0.0 | 0.0 | 0.0 | 0.0 | 0.0 | 0.0 | 0.0 | 0.0 | 0.0 | 0.0 | 0.0 | 0.0 | 0.0 | 0.0 | 0.0 |
| 39 | 1.3.7 | Insulation work | 16d | 2026-09-25 | 2026-10-10 |  |  |  |  |  |  |  |  |  |  |  |  |  |  |  |  |  |  |  |  |  |  |  |  |  |  |  |  |  |  |  |  |  |  |  |  |  |  |  |  |  |  |  |  |  |  |  |  |  |  |  |
| 40 | 1.4 | **INSPECTION** | 101d | 2026-07-17 | 2026-10-25 |  | false | false | false | false | false | false | false | false | false | false | 0.0 | 0.0 | 0.0 | 0.0 | 0.0 | 0.0 | 0.0 | 0.0 | 0.0 | 0.0 | 0.0 | 0.0 | 0.0 | 0.0 | 0.0 | false | false | false | false | false | false | false | false | false | false | 0.0 | 0.0 | 0.0 | 0.0 | 0.0 | 0.0 | 0.0 | 0.0 | 0.0 | 0.0 | 0.0 | 0.0 | 0.0 | 0.0 | 0.0 |
| 41 | 1.4.1 | PIM (Pre-Inspection Meeting), If required | 1d | 2026-07-17 | 2026-07-17 |  | false | false | false | false | false | false | false | false | false | false | 0.0 | 0.0 | 0.0 | 0.0 | 0.0 | 0.0 | 0.0 | 0.0 | 0.0 | 0.0 | 0.0 | 0.0 | 0.0 | 0.0 | 0.0 | false | false | false | false | false | false | false | false | false | false | 0.0 | 0.0 | 0.0 | 0.0 | 0.0 | 0.0 | 0.0 | 0.0 | 0.0 | 0.0 | 0.0 | 0.0 | 0.0 | 0.0 | 0.0 |
| 42 | 1.4.2 | Hydro Test -Before ass'y | 1d | 2026-07-21 | 2026-07-21 |  | false | false | false | false | false | false | false | false | false | false | 0.0 | 0.0 | 0.0 | 0.0 | 0.0 | 0.0 | 0.0 | 0.0 | 0.0 | 0.0 | 0.0 | 0.0 | 0.0 | 0.0 | 0.0 | false | false | false | false | false | false | false | false | false | false | 0.0 | 0.0 | 0.0 | 0.0 | 0.0 | 0.0 | 0.0 | 0.0 | 0.0 | 0.0 | 0.0 | 0.0 | 0.0 | 0.0 | 0.0 |
| 43 | 1.4.3 | Internal Inspection | 7d | 2026-10-12 | 2026-10-18 |  | false | false | false | false | false | false | false | false | false | false | 0.0 | 0.0 | 0.0 | 0.0 | 0.0 | 0.0 | 0.0 | 0.0 | 0.0 | 0.0 | 0.0 | 0.0 | 0.0 | 0.0 | 0.0 | false | false | false | false | false | false | false | false | false | false | 0.0 | 0.0 | 0.0 | 0.0 | 0.0 | 0.0 | 0.0 | 0.0 | 0.0 | 0.0 | 0.0 | 0.0 | 0.0 | 0.0 | 0.0 |
| 44 | 1.4.4 | Customer Inspection | 7d | 2026-10-19 | 2026-10-25 |  | false | false | false | false | false | false | false | false | false | false | 0.0 | 0.0 | 0.0 | 0.0 | 0.0 | 0.0 | 0.0 | 0.0 | 0.0 | 0.0 | 0.0 | 0.0 | 0.0 | 0.0 | 0.0 | false | false | false | false | false | false | false | false | false | false | 0.0 | 0.0 | 0.0 | 0.0 | 0.0 | 0.0 | 0.0 | 0.0 | 0.0 | 0.0 | 0.0 | 0.0 | 0.0 | 0.0 | 0.0 |
| 45 | 1.5 | **PACKING** | 64d | 2026-08-24 | 2026-10-26 |  | false | false | false | false | false | false | false | false | false | false | 0.0 | 0.0 | 0.0 | 0.0 | 0.0 | 0.0 | 0.0 | 0.0 | 0.0 | 0.0 | 0.0 | 0.0 | 0.0 | 0.0 | 0.0 | false | false | false | false | false | false | false | false | false | false | 0.0 | 0.0 | 0.0 | 0.0 | 0.0 | 0.0 | 0.0 | 0.0 | 0.0 | 0.0 | 0.0 | 0.0 | 0.0 | 0.0 | 0.0 |
| 46 | 1.5.1 | Duct burner & Header Part (ZCN) | 2d | 2026-08-24 | 2026-08-25 |  | false | false | false | false | false | false | false | false | false | false | 0.0 | 0.0 | 0.0 | 0.0 | 0.0 | 0.0 | 0.0 | 0.0 | 0.0 | 0.0 | 0.0 | 0.0 | 0.0 | 0.0 | 0.0 | false | false | false | false | false | false | false | false | false | false | 0.0 | 0.0 | 0.0 | 0.0 | 0.0 | 0.0 | 0.0 | 0.0 | 0.0 | 0.0 | 0.0 | 0.0 | 0.0 | 0.0 | 0.0 |
| 47 | 1.5.2 | Fuel Skid & Cooling Air Skid & Etc (ZKR) | 7d | 2026-10-20 | 2026-10-26 |  | false | false | false | false | false | false | false | false | false | false | 0.0 | 0.0 | 0.0 | 0.0 | 0.0 | 0.0 | 0.0 | 0.0 | 0.0 | 0.0 | 0.0 | 0.0 | 0.0 | 0.0 | 0.0 | false | false | false | false | false | false | false | false | false | false | 0.0 | 0.0 | 0.0 | 0.0 | 0.0 | 0.0 | 0.0 | 0.0 | 0.0 | 0.0 | 0.0 | 0.0 | 0.0 | 0.0 | 0.0 |
| 48 | 1.6 | **DELIVERY** | 61d | 2026-08-31 | 2026-10-30 |  | false | false | false | false | false | false | false | false | false | false | 0.0 | 0.0 | 0.0 | 0.0 | 0.0 | 0.0 | 0.0 | 0.0 | 0.0 | 0.0 | 0.0 | 0.0 | 0.0 | 0.0 | 0.0 | false | false | false | false | false | false | false | false | false | false | 0.0 | 0.0 | 0.0 | 0.0 | 0.0 | 0.0 | 0.0 | 0.0 | 0.0 | 0.0 | 0.0 | 0.0 | 0.0 | 0.0 | 0.0 |
| 49 | 1.6.1 | Duct burner & Header Part (ZCN) | 1d | 2026-08-31 | 2026-08-31 |  | false | false | false | false | false | false | false | false | false | false | 0.0 | 0.0 | 0.0 | 0.0 | 0.0 | 0.0 | 0.0 | 0.0 | 0.0 | 0.0 | 0.0 | 0.0 | 0.0 | 0.0 | 0.0 | false | false | false | false | false | false | false | false | false | false | 0.0 | 0.0 | 0.0 | 0.0 | 0.0 | 0.0 | 0.0 | 0.0 | 0.0 | 0.0 | 0.0 | 0.0 | 0.0 | 0.0 | 0.0 |
| 50 | 1.6.2 | Fuel Skid & Cooling Air Skid & Etc (ZKR) | 1d | 2026-10-30 | 2026-10-30 |  | false | false | false | false | false | false | false | false | false | false | 0.0 | 0.0 | 0.0 | 0.0 | 0.0 | 0.0 | 0.0 | 0.0 | 0.0 | 0.0 | 0.0 | 0.0 | 0.0 | 0.0 | 0.0 | false | false | false | false | false | false | false | false | false | false | 0.0 | 0.0 | 0.0 | 0.0 | 0.0 | 0.0 | 0.0 | 0.0 | 0.0 | 0.0 | 0.0 | 0.0 | 0.0 | 0.0 | 0.0 |
